# Предварительный план2007

Schedule from MS Project, 2013-04-22 to 2014-05-06, A marks actual dates.

## Calendars

- Стандартный: Mon-Fri 09:00-13:00, 14:00-18:00; Sat-Sun off. Exceptions (off unless hours are given): 2013-05-01 to 2013-05-05 (Первое мая), 2013-05-09 to 2013-05-12 (Девятое мая).

## Resources

| Resource |
| --- |
| Шилин Роман |
| Аналитик |
| Андрей Пирожков |
| Тугушев Илья |
| Денис Митавский |
| Алексей Львов |
| Андрей Карандей |
| Валерий Мацукевич |
| Java разработчик3 |
| Java разработчик4 |
| WEB-дизайнер |
| Влад Симоненко |
| Андрей Цветков |
| Java разработчик5 |
| Тест Аналитик |
| Java разработчик6 |
| Тестировщик |
| Технический писатель |
| Технолог - администратор |
| Технический писатель2 |
| Системный аналитик1 |
| Системный аналитик2 |
| Системный аналитик3 |
| Системный аналитик4 |
| Владимир Панов |
| Сергей Кашанский |
| Роман Митинков |
| Роман Болотов |
| Глеб Наздрачев |
| Евгения Капустина |
| Эдуард Михайлов |
| Тимофей Билый |

## Schedule

| ID | WBS | Task | Type | Duration | Start | Finish | Predecessors | Complete | Remaining | Total slack | Free slack | Constraint | Resources | Work | Actual work |
| --- | --- | --- | --- | --- | --- | --- | --- | --- | --- | --- | --- | --- | --- | --- | --- |
| 1 | 1 | **Разработка версии CM4/5** |  | 267d? | 2013-04-22 A | 2014-05-06 |  | 17% | 222.13d? | 0d |  |  |  | 24229.6h | 3563.52h |
| 2 | 1.1 | Принято решение о начале разработки | milestone | 0d | 2013-04-22 | 2013-04-22 |  |  |  | 0d |  | start no earlier than 2013-04-22 |  |  |  |
| 3 | 1.2 | Управление проектом |  | 267d | 2013-04-22 | 2014-05-06 | 2 |  |  | 0d |  |  | Шилин Роман | 2136h |  |
| 4 | 1.3 | **Управление требованиями** |  | 193d | 2013-05-27 A | 2014-02-19 | 2 | 27% | 141.67d | 54d |  |  | Аналитик | 3463.2h | 894.64h |
| 5 | 1.3.1 | Выделен аналитик на проект | milestone | 0d | 2013-05-27 A | 2013-05-27 A |  | 100% |  |  |  | start no earlier than 2013-05-27 |  |  |  |
| 6 | 1.3.2 | Формирование скоупа проекта _ верхний уровень |  | 15d | 2013-05-27 A | 2013-06-14 A | 5 | 100% |  |  |  |  | Евгения Капустина | 120h | 120h |
| 7 | 1.3.3 | Скоуп на систему сформирован и утвержден | milestone | 0d | 2013-06-21 A | 2013-06-21 A | 6FS+5d | 100% |  |  |  |  |  |  |  |
| 8 | 1.3.4 | Сопровождение требований |  | 173d | 2013-06-24 A | 2014-02-19 | 5, 7 | 20% | 138d | 54d |  |  | Эдуард Михайлов; Евгения Капустина [30%] | 1799.2h | 364h |
| 9 | 1.4 | **Создание модуля "Делопроизводство" (документоориентированная среда)** |  | 260.25d? | 2013-04-22 A | 2014-04-28 |  | 19% | 211.59d? | 6.75d |  |  |  | 18182.4h | 2668.88h |
| 10 | 1.4.1 | Первичные требования для создания модуля "Делопроизводство" подготовлены | milestone | 0d | 2013-04-22 | 2013-04-22 | 2 |  |  | 0d |  | finish no earlier than 2012-04-02 |  |  |  |
| 11 | 1.4.2 | **Апробация идей прототипа** |  | 24d | 2013-04-29 A | 2013-06-06 |  | 99% | 0d | 238d |  |  |  | 144h | 144h |
| 12 | 1.4.2.1 | Пирожков доступен | milestone | 0d | 2013-06-03 | 2013-06-03 |  |  |  | 242d |  | start no earlier than 2013-06-03 |  |  |  |
| 13 | 1.4.2.2 | Проведение предварительных испытаний системы |  | 9d | 2013-04-29 A | 2013-05-16 A | 10FS+5d | 100% |  |  |  |  | Андрей Цветков | 72h | 72h |
| 14 | 1.4.2.3 | Описание обработки ВХ. Док. На примере технологий прототипа |  | 9d | 2013-05-20 A | 2013-06-06 A |  | 100% |  |  |  | start no earlier than 2013-05-20 | Андрей Пирожков | 72h | 72h |
| 15 | 1.4.3 | **Настройка инфраструктуры** |  | 37d | 2013-05-20 A | 2013-07-09 | 24 | 67% | 12.33d | 0d |  |  |  | 120h | 80h |
| 16 | 1.4.3.1 | Настройка непрерывной интеграции |  | 4d | 2013-05-20 A | 2013-05-23 A |  | 100% |  |  |  |  | Тугушев Илья | 32h | 32h |
| 17 | 1.4.3.2 | Поддержка UNIT-тестирования и интеграционного тестирования на уроне среды непрерывной интеграции |  | 5d | 2013-06-04 | 2013-06-10 |  |  |  | 0d |  | start no earlier than 2013-06-04 | Тугушев Илья | 40h |  |
| 18 | 1.4.3.3 | Репакеджинг проекта |  | 3d | 2013-05-27 A | 2013-05-29 A |  | 100% |  |  |  | start no earlier than 2013-05-27 | Сергей Кашанский | 24h | 24h |
| 19 | 1.4.3.4 | Автоматическое заполнение параметров JDBC через Maven |  | 3d | 2013-07-05 A | 2013-07-09 A | 30 | 100% |  |  |  |  | Андрей Цветков | 24h | 24h |
| 20 | 1.4.4 | **Проектирование и формирование ядра системы** |  | 180.25d? | 2013-04-22 A | 2014-01-06 | 10 | 29% | 127.94d? | 18.75d | 0d |  |  | 7898.4h | 1868.88h |
| 21 | 1.4.4.1 | **Определение структуры модуля Делопроизводство** |  | 25d | 2013-04-22 A | 2013-05-31 A |  | 100% |  |  |  |  |  | 352h | 352h |
| 22 | 1.4.4.1.1 | Разбивка на слои |  | 5d | 2013-04-22 A | 2013-04-26 A |  | 100% |  |  |  |  | Денис Митавский [50%]; Андрей Пирожков [50%] | 40h | 40h |
| 23 | 1.4.4.1.2 | Конфигурации, загрузка и инициализация системы в базовой конфигурации |  | 5d | 2013-04-29 A | 2013-05-08 A | 22 | 100% |  |  |  |  | Валерий Мацукевич; Денис Митавский [50%] | 60h | 60h |
| 24 | 1.4.4.1.3 | Базовая конфигурация объектов системы |  | 5d | 2013-05-13 A | 2013-05-17 A | 22, 23 | 100% |  |  |  |  | Денис Митавский [50%]; Валерий Мацукевич | 60h | 60h |
| 25 | 1.4.4.1.4 | Юнит-тестирование - базис |  | 6d | 2013-05-17 A | 2013-05-24 A | 13 | 100% |  |  |  |  | Денис Митавский [50%]; Андрей Цветков | 72h | 72h |
| 26 | 1.4.4.1.5 | Базовая имплементация слоя DAO |  | 5d | 2013-05-20 A | 2013-05-24 A | 24 | 100% |  |  |  |  | Валерий Мацукевич | 40h | 40h |
| 27 | 1.4.4.1.6 | Обеспечение программных компонет верификации первой очереди |  | 5d | 2013-05-27 A | 2013-05-31 A | 26 | 100% |  |  |  |  | Валерий Мацукевич; Андрей Цветков | 80h | 80h |

Notes:
- 27: UNIT тестирование в рамках наработанного кода

| ID | WBS | Task | Type | Duration | Start | Finish | Predecessors | Complete | Remaining | Total slack | Free slack | Constraint | Resources | Work | Actual work |
| --- | --- | --- | --- | --- | --- | --- | --- | --- | --- | --- | --- | --- | --- | --- | --- |
| 28 | 1.4.4.2 | **DAO** |  | 43d? | 2013-06-03 A | 2013-07-31 A | 26, 27 | 100% |  |  |  |  |  | 224h | 224h |
| 29 | 1.4.4.2.1 | DAO для бизнес-объектов |  | 7d | 2013-06-03 A | 2013-06-11 A |  | 100% |  |  |  |  | Валерий Мацукевич | 56h | 56h |
| 30 | 1.4.4.2.2 | DAO для коллекций |  | 13d | 2013-06-12 A | 2013-07-04 A | 29 | 100% |  |  |  |  | Андрей Цветков | 104h | 104h |
| 31 | 1.4.4.2.3 | Функционал системы готов для проведения проектирования интеграции с GUI СМ4 | milestone | 0d | 2013-06-24 A | 2013-06-24 A | 29, 30 | 100% |  |  |  |  |  |  |  |
| 32 | 1.4.4.2.4 | DAO - утилитарные поля |  | 6d | 2013-06-25 A | 2013-07-08 A | 30 | 100% |  |  |  |  | Денис Митавский [50%] | 24h | 24h |
| 33 | 1.4.4.2.5 | DAO - кэш уровня транзакции |  | 5d? | 2013-07-25 A | 2013-07-31 A | 74 | 100% |  |  |  |  | Влад Симоненко | 40h | 40h |
| 34 | 1.4.4.3 | CRUD-сервис для бизнес-объектов |  | 10d | 2013-06-11 A | 2013-06-24 A | 30FF | 100% |  |  |  |  | Андрей Цветков | 80h | 80h |
| 35 | 1.4.4.4 | Расширение CRUD для интеграции с CMJ |  | 5d | 2013-08-08 A | 2013-08-14 A |  | 100% |  |  |  | start no earlier than 2013-08-08 | Андрей Карандей | 40h | 40h |
| 36 | 1.4.4.5 | Поддержка отсортированных дочерних бизнес-объектов |  | 5d | 2013-08-21 | 2013-08-27 | 49 |  |  | 63d | 0d |  | Валерий Мацукевич | 40h |  |
| 37 | 1.4.4.6 | Настройка Datasources/Jaas сервера приложений средствами Maven |  | 2d | 2013-07-05 A | 2013-07-08 A | 30 | 100% |  |  |  |  | Сергей Кашанский | 16h | 16h |
| 38 | 1.4.4.7 | Рефакторинг |  | 4d | 2013-07-03 A | 2013-07-08 A | 26 | 100% |  |  |  | start no earlier than 2013-07-03 | Валерий Мацукевич | 32h | 32h |
| 39 | 1.4.4.8 | **Права доступа** |  | 60d | 2013-06-12 A | 2013-09-03 |  | 76% | 14.54d | 107d |  |  |  | 448h | 338.4h |
| 40 | 1.4.4.8.1 | Права - оптимизация хранения (проектирование) |  | 30d | 2013-06-12 A | 2013-07-23 | 29 | 77% | 7d | 0.5d | 0d |  | Андрей Пирожков [50%] | 120h | 92h |
| 41 | 1.4.4.8.2 | Описание существующими декларативными средствами конфигурации |  | 19d | 2013-07-16 A | 2013-08-09 A | 40, 19 | 100% |  |  |  |  | Андрей Цветков | 152h | 152h |
| 42 | 1.4.4.8.3 | Автофильтрация |  | 10d | 2013-07-29 A | 2013-08-16 A | 41 | 100% |  |  |  |  | Андрей Цветков | 80h | 80h |
| 43 | 1.4.4.8.4 | Пересчёт прав доступа |  | 12d | 2013-08-19 A | 2013-09-03 | 42 | 15% | 10.2d | 107d |  |  | Андрей Цветков | 96h | 14.4h |
| 44 | 1.4.4.9 | **Workflow - интеграция с Activiti** |  | 59d | 2013-06-07 A | 2013-08-28 | 14 | 29% | 42.02d | 31d | 0d |  |  | 280h | 38h |
| 45 | 1.4.4.9.1 | Проектирование |  | 10d | 2013-06-07 A | 2013-07-24 | 40 | 95% | 0.5d | 36d | 0d |  | Андрей Пирожков [50%] | 40h | 38h |
| 46 | 1.4.4.9.2 | Разработка |  | 23d | 2013-07-25 | 2013-08-28 | 45 |  |  | 31d |  |  | Андрей Пирожков [50%]; Сергей Кашанский | 240h |  |
| 47 | 1.4.4.10 | **Наследование ???** |  | 8d | 2013-08-09 A | 2013-08-20 A | 45 | 100% |  |  |  |  | Андрей Пирожков [50%] | 88h | 88h |
| 48 | 1.4.4.10.1 | Проектирование функции "Наследование" |  | 2d | 2013-08-09 A | 2013-08-12 A |  | 100% |  |  |  | finish no earlier than 2013-08-12 | Андрей Пирожков | 16h | 16h |
| 49 | 1.4.4.10.2 | Разработка функции "Наследование" |  | 6d | 2013-08-13 A | 2013-08-20 A | 48 | 100% |  |  |  |  | Валерий Мацукевич | 48h | 48h |
| 50 | 1.4.4.11 | **Коллекции** |  | 74d | 2013-05-29 A | 2013-09-09 |  | 56% | 32.38d | 80d |  |  |  | 320h | 188h |
| 51 | 1.4.4.11.1 | Коллекции - конфигурация |  | 3d | 2013-05-29 A | 2013-05-31 A |  | 100% |  |  |  |  | Денис Митавский | 24h | 24h |
| 52 | 1.4.4.11.2 | DAO - язык запросов коллекций |  | 12d | 2013-05-29 A | 2013-06-17 A | 51 | 100% |  |  |  |  | Сергей Кашанский; Денис Митавский [50%] | 140h | 140h |
| 53 | 1.4.4.11.3 | Сервис получения и получения счетчиков |  | 3d | 2013-05-29 A | 2013-05-31 A | 51 | 100% |  |  |  |  | Сергей Кашанский | 24h | 24h |
| 54 | 1.4.4.11.4 | ПКД |  | 14d | 2013-08-21 | 2013-09-09 | 52, 47 |  |  | 80d | 0d |  | Андрей Пирожков [50%]; Сергей Кашанский | 132h |  |

Notes:
- 34: - проектирование базового API / - имплементация
- 36: Для отображени и поддержания заданного порядка следования объектов
- 40: Права доступа - оптимизация подхода, / подбор других названий сущностей (таблицы) переименовать таблицы и улучшить производительность
- 41: Права доступа - описание существующими декларативными средствами конфигурации / (для автоматического создания таблиц) + / конфигурирование под-запроса для фильтрации - там же
- 42: Права доступа - авто-фильтрация / + "внедрение в под-запросы"
- 44: Задачи: / - модель процесса (BPMN) / - Имплементация WF - сервиса , взаимодействие системы с Аctiviti
- 47: Архитектура - форма хранения данных (с учетом производительности) / Наследование типов объектов - уровень DAO
- 52: DAO - язык запросов коллекций
- 53: Коллекции - сервис получения и получения счетчиков
- 54: Для поддержания реализации избранного, отметок о прочтении и т.д.

| ID | WBS | Task | Type | Duration | Start | Finish | Predecessors | Complete | Remaining | Total slack | Free slack | Constraint | Resources | Work | Actual work |
| --- | --- | --- | --- | --- | --- | --- | --- | --- | --- | --- | --- | --- | --- | --- | --- |
| 55 | 1.4.4.12 | **Действия** |  | 18d | 2013-08-26 | 2013-09-18 |  |  |  | 96d |  |  |  | 184h |  |
| 56 | 1.4.4.12.1 | Концепция |  | 4d | 2013-08-26 | 2013-08-29 | 51, 42 |  |  | 96d | 0d |  | Андрей Пирожков [50%] | 16h |  |
| 57 | 1.4.4.12.2 | Реализация |  | 14d | 2013-08-30 | 2013-09-18 | 56 |  |  | 96d |  |  | Андрей Карандей; Андрей Пирожков [50%] | 168h |  |
| 58 | 1.4.4.13 | **Бизнес-объекты (иерархии доменных объектов)** |  | 28.25d | 2013-07-24 A | 2013-09-02 |  | 37% | 17.82d | 108.75d |  |  |  | 116.8h | 31.6h |
| 59 | 1.4.4.13.1 | Проектирование |  | 8d | 2013-07-24 A | 2013-08-16 | 60SF, 48 | 59% | 3.25d | 109.75d | 0d |  | Андрей Пирожков [20%] | 12.8h | 7.6h |
| 60 | 1.4.4.13.2 | Реализация1 |  | 3d | 2013-07-31 A | 2013-08-02 A | 102SF | 100% |  |  |  |  | Андрей Пирожков | 24h | 24h |
| 61 | 1.4.4.13.3 | Реализация 2 |  | 10d | 2013-08-16 | 2013-09-02 | 59 |  |  | 108.75d |  |  | Влад Симоненко | 80h |  |
| 62 | 1.4.4.14 | **Слой сопряжения GUI CM4** |  | 110.25d | 2013-08-05 A | 2014-01-06 |  | 7% | 103.06d | 18.75d |  |  |  | 1209.6h | 74.48h |
| 63 | 1.4.4.14.1 | Решение принято и ресурсы достуны | milestone | 0d | 2013-08-05 A | 2013-08-05 A |  | 100% |  |  |  | start no earlier than 2013-08-05 |  |  |  |
| 64 | 1.4.4.14.2 | Реализация коннекторов к платформе |  | 97.25d | 2013-08-08 A | 2013-12-23 | 63FS+3d | 7% | 90.25d | 18.75d | 0d |  | Тугушев Илья [75%]; Глеб Наздрачев [75%] | 1120h | 74.48h |
| 65 | 1.4.4.14.3 | Описание решения есть. Можно начинать разработку | milestone | 0d | 2013-08-28 | 2013-08-28 |  |  |  | 112d |  | start no earlier than 2013-08-28 |  |  |  |
| 66 | 1.4.4.14.4 | Проработка задания выполнена, можно привлекать разработчиков БТЛ | milestone | 0d | 2013-09-04 | 2013-09-04 |  |  |  | 107d |  | start no earlier than 2013-09-04 |  |  |  |
| 67 | 1.4.4.14.5 | Сопряжение - работа с вложениями |  | 7d | 2013-12-23 | 2014-01-01 | 64, 74 |  |  | 18.75d | 0d |  | Влад Симоненко | 56h |  |
| 68 | 1.4.4.14.6 | REST-протокол для АРМа - проектирование |  | 3d | 2014-01-01 | 2014-01-06 | 31, 67 |  |  | 18.75d |  |  | Тугушев Илья; Денис Митавский [20%]; Андрей Пирожков [20%] | 33.6h |  |
| 69 | 1.4.4.15 | **Сервис работы с вложениями** |  | 22d | 2013-07-11 A | 2013-08-09 A |  | 100% |  |  |  |  |  | 176h | 176h |
| 70 | 1.4.4.15.1 | Принято решение о проектировании сервиса обработки вложений | milestone | 0d | 2013-07-11 A | 2013-07-11 A |  | 100% |  |  |  | start no earlier than 2013-07-11 |  |  |  |
| 71 | 1.4.4.15.2 | API |  | 5d | 2013-07-11 A | 2013-07-17 A | 70 | 100% |  |  |  |  | Андрей Цветков | 40h | 40h |
| 72 | 1.4.4.15.3 | Реализация |  | 7d | 2013-07-18 A | 2013-07-26 A | 71 | 100% |  |  |  |  | Влад Симоненко | 56h | 56h |
| 73 | 1.4.4.15.4 | Исследования по перехватчику конца транзакции |  | 5d | 2013-07-29 A | 2013-08-02 A | 72 | 100% |  |  |  |  | Влад Симоненко | 40h | 40h |
| 74 | 1.4.4.15.5 | Чистка файлов в случае отката транзакции |  | 5d | 2013-08-05 A | 2013-08-09 A | 73 | 100% |  |  |  |  | Влад Симоненко | 40h | 40h |
| 75 | 1.4.4.16 | **Поиск** |  | 37d | 2013-07-29 A | 2013-09-18 | 34 | 10% | 33.48d | 96d |  |  |  | 436h | 48h |
| 76 | 1.4.4.16.1 | Идея поиска оформлена | milestone | 0d | 2013-07-29 | 2013-07-29 |  |  |  | 4d | 0d | finish no earlier than 2013-07-29 |  |  |  |
| 77 | 1.4.4.16.2 | Поиск |  | 16d | 2013-07-30 A | 2013-08-26 | 76 | 25% | 12d | 97d | 0d |  | Андрей Пирожков [50%]; Андрей Цветков | 180h | 48h |
| 78 | 1.4.4.16.3 | Полнотекстовый поиск |  | 20d | 2013-08-13 | 2013-09-10 | 76, 77FS-10d |  |  | 96d | 0d |  | Влад Симоненко | 160h |  |
| 79 | 1.4.4.16.4 | Расширенный поиск |  | 6d | 2013-09-11 | 2013-09-18 | 77, 78 |  |  | 96d |  |  | Андрей Пирожков; Андрей Цветков | 96h |  |

Notes:
- 64: Начальная реализация модуля "документооборот" - замена лотуса
- 78: Включая взаимодействие с Solr
- 79: C учетом релевантности и оптимизации по объедененеию поисков аттрибутивного и полнотекстового

| ID | WBS | Task | Type | Duration | Start | Finish | Predecessors | Complete | Remaining | Total slack | Free slack | Constraint | Resources | Work | Actual work |
| --- | --- | --- | --- | --- | --- | --- | --- | --- | --- | --- | --- | --- | --- | --- | --- |
| 80 | 1.4.4.17 | **Работа с отчетами** |  | 23d | 2013-09-10 | 2013-10-10 |  |  |  | 80d |  |  |  | 276h |  |
| 81 | 1.4.4.17.1 | JDBC-драйвер для системы построения отчётов |  | 8d | 2013-09-10 | 2013-09-19 | 54 |  |  | 80d | 0d |  | Денис Митавский [50%]; Андрей Цветков | 96h |  |
| 82 | 1.4.4.17.2 | Интеграция с Jasper Reports |  | 15d | 2013-09-20 | 2013-10-10 | 81 |  |  | 80d |  |  | Денис Митавский [50%]; Андрей Цветков | 180h |  |
| 83 | 1.4.4.18 | **GUI** |  | 92d? | 2013-07-22 A | 2013-11-26 |  | 5% | 87.09d? | 45d | 0d |  |  | 2052h | 70.4h |
| 84 | 1.4.4.18.1 | Принято решение о применении GWT-компонентов | milestone | 0d | 2013-07-22 | 2013-07-22 |  |  |  | 84d | 0d | start no earlier than 2013-07-22 |  |  |  |
| 85 | 1.4.4.18.2 | Адаптация компонентов GUI из СМ4 для наложения на архитектуру см5 |  | 35d | 2013-07-22 | 2013-09-09 | 84 |  |  | 83d | 0d | start no earlier than 2013-07-11 | Тимофей Билый; Алексей Львов | 560h |  |
| 86 | 1.4.4.18.3 | Изучение GWT/Настройка CMJ 4 для дебага |  | 4d | 2013-08-05 | 2013-08-08 |  |  |  | 123d |  | start no earlier than 2013-08-05 | Андрей Карандей | 32h |  |
| 87 | 1.4.4.18.4 | Разработка базовой архитектуры GUI на основе GWT-компонентов |  | 3d | 2013-07-22 A | 2013-07-24 A | 84 | 100% |  |  |  |  | Денис Митавский | 24h | 24h |
| 88 | 1.4.4.18.5 | Интеграция с JAAS/Аутентификация |  | 5d | 2013-07-31 A | 2013-08-06 A | 87 | 100% |  |  |  | start no earlier than 2013-07-08 | Денис Митавский | 40h | 40h |
| 89 | 1.4.4.18.6 | Архитектура разметки главного экрана |  | 2d | 2013-08-07 A | 2013-08-08 | 88 | 80% | 0.4d | 43d | 0d |  | Денис Митавский [50%] | 8h | 6.4h |
| 90 | 1.4.4.18.7 | **Панель навигации** |  | 28d | 2013-08-09 | 2013-09-17 |  |  |  | 43d |  |  |  | 56h |  |
| 91 | 1.4.4.18.7.1 | Проектирование - панель навигации |  | 2d | 2013-08-09 | 2013-08-12 | 89 |  |  | 43d | 0d |  | Денис Митавский [50%] | 8h |  |
| 92 | 1.4.4.18.7.2 | Разработка - панель навигации |  | 6d | 2013-09-10 | 2013-09-17 | 91, 85 |  |  | 83d | 0d |  | Алексей Львов | 48h |  |
| 93 | 1.4.4.18.8 | GUI - архитектура плагинов/дочерних плагинов. Базис |  | 10d | 2013-08-13 | 2013-08-27 | 91 |  |  | 42d | 0d |  | Денис Митавский | 80h |  |
| 94 | 1.4.4.18.9 | GUI - отображение отчётов |  | 8d | 2013-08-28 | 2013-09-06 | 93 |  |  | 100d | 0d |  | Андрей Карандей | 64h |  |
| 95 | 1.4.4.18.10 | **GUI - плагин отображения коллекций** |  | 21d | 2013-08-28 | 2013-09-25 | 93 |  |  | 42d |  |  |  | 64h |  |
| 96 | 1.4.4.18.10.1 | Проектирование |  | 2d | 2013-08-28 | 2013-08-29 | 93 |  |  | 42d | 0d |  | Денис Митавский | 16h |  |
| 97 | 1.4.4.18.10.2 | Разработка |  | 6d | 2013-09-18 | 2013-09-25 | 92 |  |  | 83d | 0d |  | Алексей Львов | 48h |  |
| 98 | 1.4.4.18.11 | **GUI - действия** |  | 25d | 2013-08-30 | 2013-10-03 |  |  |  | 42d |  |  |  | 56h |  |
| 99 | 1.4.4.18.11.1 | Проектирование |  | 2d | 2013-08-30 | 2013-09-02 | 96 |  |  | 42d | 0d |  | Денис Митавский [50%] | 8h |  |
| 100 | 1.4.4.18.11.2 | Разработка |  | 6d | 2013-09-26 | 2013-10-03 | 97 |  |  | 83d |  |  | Алексей Львов | 48h |  |
| 101 | 1.4.4.18.12 | **Формы встроенного GUI** |  | 23d | 2013-09-03 | 2013-10-03 |  |  |  | 42d |  |  |  | 188h |  |
| 102 | 1.4.4.18.12.1 | Конфигурация-архитектура |  | 3d | 2013-09-03 | 2013-09-05 | 99 |  |  | 42d | 0d |  | Денис Митавский [50%] | 12h |  |
| 103 | 1.4.4.18.12.2 | Маппинг на объекты |  | 2d | 2013-09-09 | 2013-09-10 | 102, 94 |  |  | 100d |  |  | Андрей Карандей | 16h |  |
| 104 | 1.4.4.18.12.3 | API GWT client-server |  | 8d | 2013-09-06 | 2013-09-17 | 102 |  |  | 42d | 0d |  | Денис Митавский | 64h |  |
| 105 | 1.4.4.18.12.4 | Реализация |  | 12d | 2013-09-18 | 2013-10-03 | 104 |  |  | 78d | 0d |  | Андрей Карандей | 96h |  |

Notes:
- 81: Используя язык запросов коллеций

| ID | WBS | Task | Duration | Start | Finish | Predecessors | Complete | Remaining | Total slack | Free slack | Resources | Work | Actual work |
| --- | --- | --- | --- | --- | --- | --- | --- | --- | --- | --- | --- | --- | --- |
| 106 | 1.4.4.18.13 | **GUI - поиск** | 17d | 2013-09-18 | 2013-10-10 |  |  |  | 64d |  |  | 52h |  |
| 107 | 1.4.4.18.13.1 | GUI - поиск. Проектирование | 3d | 2013-09-18 | 2013-09-20 | 104 |  |  | 64d | 22d | Денис Митавский [50%] | 12h |  |
| 108 | 1.4.4.18.13.2 | GUI - поиск. Реализация | 5d | 2013-10-04 | 2013-10-10 | 105 |  |  | 78d |  | Андрей Карандей | 40h |  |
| 109 | 1.4.4.18.14 | **GUI - виджеты разработка** | 50d? | 2013-09-18 | 2013-11-26 |  |  |  | 42d |  |  | 808h |  |
| 110 | 1.4.4.18.14.1 | Дата/время | 1d? | 2013-09-18 | 2013-09-18 | 104 |  |  | 94d |  | Тимофей Билый | 8h |  |
| 111 | 1.4.4.18.14.2 | Остальные без особенностей стиля ст.лебедева (базовый набор) | 25d? | 2013-09-18 | 2013-10-22 | 104 |  |  | 42d | 0d | Тимофей Билый; Алексей Львов | 400h |  |
| 112 | 1.4.4.18.14.3 | Остальные для стиля ст.лебедева | 25d? | 2013-10-23 | 2013-11-26 | 111 |  |  | 45d |  | Андрей Карандей; Алексей Львов | 400h |  |
| 113 | 1.4.4.18.15 | **GUI - брендинг, стилизация, темы** | 5d | 2013-10-23 | 2013-10-29 |  |  |  | 42d |  |  | 20h |  |
| 114 | 1.4.4.18.15.1 | Концепция | 5d | 2013-10-23 | 2013-10-29 | 107, 111 |  |  | 42d | 0d | Денис Митавский [50%] | 20h |  |
| 115 | 1.4.4.19 | Тестирование производительности | 25d | 2013-10-30 | 2013-12-03 | 114 |  |  | 42d |  | Денис Митавский; Валерий Мацукевич | 400h |  |
| 116 | 1.4.4.20 | Версионность/аудит | 8d | 2013-08-28 | 2013-09-06 | 36 |  |  | 63d | 0d | Валерий Мацукевич | 64h |  |
| 117 | 1.4.4.21 | Блокировки бизнес-объектов | 6d | 2013-09-09 | 2013-09-16 | 116 |  |  | 63d | 0d | Валерий Мацукевич | 48h |  |
| 118 | 1.4.4.22 | Описание структуры модуля Делопроизводство | 20d | 2013-07-30 | 2013-08-26 | 21, 15, 14, 76 |  |  | 33d | 2d | Владимир Панов | 160h |  |
| 119 | 1.4.4.23 | Уточнение состава и сроков работ | 2d | 2013-11-27 | 2013-11-28 | 83 |  |  | 45d |  | Андрей Пирожков; Денис Митавский; Тугушев Илья | 48h |  |
| 120 | 1.4.4.24 | Кросс-СУБД, поддержка Oracle | 15d | 2013-09-17 | 2013-10-07 | 117 |  |  | 63d | 0d | Валерий Мацукевич | 120h |  |
| 121 | 1.4.4.25 | SQL-trace | 5d | 2013-10-08 | 2013-10-14 | 120 |  |  | 63d | 0d | Влад Симоненко | 40h |  |
| 122 | 1.4.4.26 | Локализация (на уровне конфигурации) | 15d | 2013-10-15 | 2013-11-04 | 121 |  |  | 63d |  | Влад Симоненко | 120h |  |
| 123 | 1.4.4.27 | **Интеграция с системой управления учетными записями** | 14d | 2013-09-17 | 2013-10-04 | 117 |  |  | 84d |  |  | 56h |  |
| 124 | 1.4.4.27.1 | Интеграция с ActiveDirectory | 14d | 2013-09-17 | 2013-10-04 |  |  |  | 84d |  | Андрей Пирожков [50%] | 56h |  |
| 125 | 1.4.4.28 | **Расширение функций сервиса конфигурации** | 28d | 2013-07-09 A | 2013-08-15 |  | 32% | 19d | 105d |  |  | 352h | 72h |
| 126 | 1.4.4.28.1 | Расширяемость конфигурации | 12d | 2013-07-09 A | 2013-07-24 | 38 | 75% | 3d | 105d | 0d | Валерий Мацукевич | 96h | 72h |
| 127 | 1.4.4.28.2 | Изменение и дополнение конфигурации системы | 16d | 2013-07-25 | 2013-08-15 | 126 |  |  | 105d | 0d | Андрей Пирожков; Роман Митинков | 256h |  |
| 128 | 1.4.4.29 | **Сервис для работы с системным журналом** | 16d | 2013-08-16 | 2013-09-06 | 127 |  |  | 104d |  |  | 120h |  |
| 129 | 1.4.4.29.1 | Ведение журнала действий пользователей и действий с объектами системы | 10d | 2013-08-16 | 2013-08-30 |  |  |  | 104d | 0d | Андрей Карандей | 80h |  |
| 130 | 1.4.4.29.2 | Настройка уровня логирования | 5d | 2013-09-02 | 2013-09-06 | 129 |  |  | 104d |  | Андрей Карандей | 40h |  |

Notes:
- 115: - полноценное, продуманное, конфигурируемое, полностью автоматизированное (вплоть до промежуточного сбора статистики в СУБД перед запуском тестов производительности) с автоматической генерацией таблиц и графиков, с поддержкой нагружающих потоков и т.п.
- 116: История модификации объекта / Версионность - на бизнес слой
- 120: Кросс-СУБД, поддержка Oracle
- 122: Поддержка ресурсных файлов - в расках конфигурирования ресурсных файлов / Подмена языка в интерфейсе (передача локали пользоввателю) -
- 128: Сервис для работы с системным журналомВедение журнала действий пользователей и действий с объектами системы
- 129: Ведение журнала действий пользователей и действий с объектами системы

| ID | WBS | Task | Duration | Start | Finish | Predecessors | Complete | Remaining | Total slack | Free slack | Resources | Work | Actual work |
| --- | --- | --- | --- | --- | --- | --- | --- | --- | --- | --- | --- | --- | --- |
| 131 | 1.4.5 | **Разработка** | 209d | 2013-06-11 A | 2014-03-28 | 15 | 8% | 192.22d | 27d |  |  | 6676h | 576h |
| 132 | 1.4.5.1 | Контроль и корректировка технических решений "Архитектурный комитет" | 208d | 2013-06-11 A | 2014-03-28 |  | 23% | 160d | 27d |  | Тугушев Илья [20%]; Андрей Пирожков [20%]; Денис Митавский [20%]; WEB-дизайнер [20%]; Аналитик [20%]; Владимир Панов [50%] | 2436h | 576h |
| 133 | 1.4.5.2 | **Разработка серверной логики модуля CMJ** | 60d | 2013-08-29 | 2013-11-20 | 15, 44, 118 |  |  | 31d | 0d |  | 1920h |  |
| 134 | 1.4.5.2.1 | Разработка схем документов модуля CMJ | 40d | 2013-08-29 | 2013-10-23 |  |  |  | 31d | 0d | Андрей Пирожков [50%]; Влад Симоненко | 480h |  |
| 135 | 1.4.5.2.2 | Разработка ЖЦ процессов модуля (WF) | 20d | 2013-10-24 | 2013-11-20 | 134 |  |  | 31d | 0d | Влад Симоненко; Андрей Пирожков [50%] | 240h |  |
| 136 | 1.4.5.2.3 | Разработка логики бизнес- действий модуля CMJ | 60d | 2013-08-29 | 2013-11-20 |  |  |  | 31d | 0d | Алексей Львов; Андрей Пирожков [50%] | 720h |  |
| 137 | 1.4.5.2.4 | Разработка процессов автоматизации для модуля CMJ | 40d | 2013-08-29 | 2013-10-23 |  |  |  | 89d |  | Андрей Карандей | 320h |  |
| 138 | 1.4.5.2.5 | Разработка модели прав доступа (контекстные роли) | 20d | 2013-10-24 | 2013-11-20 | 134 |  |  | 69d |  | Андрей Карандей | 160h |  |
| 139 | 1.4.5.3 | **Разработка Форм для АРМ тематических администраторов** | 40d | 2013-12-23 | 2014-02-17 | 64 |  |  | 56.75d |  |  | 960h |  |
| 140 | 1.4.5.3.1 | **Подготовка работы со списками значений** | 40d | 2013-12-23 | 2014-02-17 |  |  |  | 56.75d |  |  | 640h |  |
| 141 | 1.4.5.3.1.1 | Разработка функционала учета организационно штатной структуры | 40d | 2013-12-23 | 2014-02-17 |  |  |  | 56.75d |  | Андрей Цветков | 320h |  |
| 142 | 1.4.5.3.1.2 | Разработка функционала с рубрикаторами (сложные справочники) | 20d | 2013-12-23 | 2014-01-20 |  |  |  | 56.75d | 0d | Валерий Мацукевич | 160h |  |
| 143 | 1.4.5.3.1.3 | Разработка функционала для работы с словарями данных (простые, линейные справочники) | 20d | 2014-01-20 | 2014-02-17 | 142 |  |  | 56.75d |  | Валерий Мацукевич | 160h |  |
| 144 | 1.4.5.3.2 | Разработка форм для работы в GUI (настройки форм) | 15d | 2013-12-23 | 2014-01-13 |  |  |  | 76.75d | 0d | Java разработчик3 | 120h |  |
| 145 | 1.4.5.3.3 | Разработка структуры рабочего места АРМ | 5d | 2014-01-13 | 2014-01-20 | 134, 144 |  |  | 76.75d |  | Java разработчик3 | 40h |  |
| 146 | 1.4.5.3.4 | Разработка специфичных для форм АРМ элементов GUI | 20d | 2013-12-23 | 2014-01-20 |  |  |  | 76.75d |  | Java разработчик4 | 160h |  |
| 147 | 1.4.5.4 | Подготовка отчетов | 40d | 2013-11-21 | 2014-01-15 | 134, 136, 135 |  |  | 31d | 7.25d | Влад Симоненко; Алексей Львов; Андрей Карандей | 960h |  |
| 148 | 1.4.5.5 | Сопряжение с мобильным клиентом СМ4 | 50d | 2013-11-21 | 2014-01-29 | 133 |  |  | 69d |  | Java разработчик3 | 400h |  |
| 149 | 1.4.6 | **Тестирование** | 68d? | 2014-01-06 | 2014-04-10 | 20 |  |  | 18.75d | 0d |  | 2544h |  |
| 150 | 1.4.6.1 | **Функциональное тестирование** | 53d? | 2014-01-06 | 2014-03-20 |  |  |  | 18.75d |  |  | 2224h |  |
| 151 | 1.4.6.1.1 | Подготовка ПМИ | 5d | 2014-01-06 | 2014-01-13 |  |  |  | 18.75d | 0d | Тест Аналитик | 40h |  |
| 152 | 1.4.6.1.2 | Разработка "сценариев тестирования" | 15d | 2014-01-06 | 2014-01-27 |  |  |  | 23.75d | 0d | Тест Аналитик | 120h |  |
| 153 | 1.4.6.1.3 | Разработка модели нагрузки для тестирования | 10d | 2014-01-13 | 2014-01-27 | 151 |  |  | 23.75d | 0d | Тест Аналитик | 80h |  |
| 154 | 1.4.6.1.4 | Адаптация автоматизированных сценариев от СМ4 для создания нагрузки | 25d | 2014-01-13 | 2014-02-17 | 151 |  |  | 18.75d | 0d | Влад Симоненко | 200h |  |

| ID | WBS | Task | Type | Duration | Start | Finish | Predecessors | Total slack | Free slack | Constraint | Resources | Work |
| --- | --- | --- | --- | --- | --- | --- | --- | --- | --- | --- | --- | --- |
| 155 | 1.4.6.1.5 | **Проведение тестирования** |  | 38d? | 2014-01-27 | 2014-03-20 | 152, 153 | 23.75d | 0d |  |  | 1784h |
| 156 | 1.4.6.1.5.1 | **Подготовка среды тестирования** |  | 10d? | 2014-01-27 | 2014-02-10 |  | 23.75d |  |  |  | 200h |
| 157 | 1.4.6.1.5.1.1 | Разворачивание системы |  | 5d? | 2014-01-27 | 2014-02-03 | 159SF | 66.75d | 0d |  | Влад Симоненко | 40h |
| 158 | 1.4.6.1.5.1.2 | Система готова для подключения инструментов мониторинга | milestone | 0d | 2014-02-03 | 2014-02-03 | 157 | 66.75d |  |  |  |  |
| 159 | 1.4.6.1.5.1.3 | Наполнение данными |  | 10d? | 2014-01-27 | 2014-02-10 | 147 | 23.75d | 5d |  | Влад Симоненко; Java разработчик6 | 160h |
| 160 | 1.4.6.1.5.2 | Среда тестирования готова | milestone | 0d | 2014-02-17 | 2014-02-17 | 159, 154 | 18.75d | 0d | start no earlier than 2012-05-24 |  |  |
| 161 | 1.4.6.1.5.3 | Проведение тестирования |  | 10d | 2014-02-17 | 2014-03-03 | 160 | 18.75d | 0d |  | Тест Аналитик; Тестировщик [200%] | 240h |
| 162 | 1.4.6.1.5.4 | **Обработка результатов тестирования и внесение изменений в модуль** |  | 15d | 2014-02-27 | 2014-03-20 | 161FS-2d | 18.75d |  |  |  | 1344h |
| 163 | 1.4.6.1.5.4.1 | Устранение замечаний по результатам функционального тестирования |  | 15d | 2014-02-27 | 2014-03-20 |  | 18.75d | 0d |  | Java разработчик5; Влад Симоненко [300%]; Валерий Мацукевич; Java разработчик3; Java разработчик4; Андрей Карандей; Алексей Львов; Андрей Цветков | 1200h |
| 164 | 1.4.6.1.5.4.2 | Проверка устранения замечаний |  | 6d | 2014-03-12 | 2014-03-20 | 163FS-6d | 18.75d | 0d |  | Тест Аналитик; Тестировщик [200%] | 144h |
| 165 | 1.4.6.2 | **Нагрузочное тестирование** |  | 28d | 2014-03-03 | 2014-04-10 | 151 | 18.75d |  |  |  | 320h |
| 166 | 1.4.6.2.1 | Стенд для нагрузочного тестирования подготовлен | milestone | 0d | 2014-03-03 | 2014-03-03 | 161 | 31.75d | 13d | finish no earlier than 2012-06-09 |  |  |
| 167 | 1.4.6.2.2 | Проведения нагрузочного тестирования |  | 10d | 2014-03-20 | 2014-04-03 | 164, 154, 166 | 18.75d | 0d |  | Влад Симоненко; Тест Аналитик; Тестировщик | 240h |
| 168 | 1.4.6.2.3 | Обработка результатов нагрузочного тестирования |  | 5d | 2014-04-03 | 2014-04-10 | 167 | 18.75d |  |  | Тест Аналитик; Тестировщик | 80h |
| 169 | 1.4.7 | Разработка модуля "Делопроизводство" завершена | milestone | 0d | 2014-04-10 | 2014-04-10 | 149 | 18.75d |  |  |  |  |
| 170 | 1.4.8 | **Подготовка документации** |  | 80d | 2014-01-06 | 2014-04-28 | 149SS | 6.75d |  |  |  | 800h |
| 171 | 1.4.8.1 | Разработка документа "Концепция системы " |  | 40d | 2014-01-06 | 2014-03-03 |  | 6.75d | 0d |  | Владимир Панов | 320h |
| 172 | 1.4.8.2 | Разработка "Software Architecture Document" |  | 40d | 2014-03-03 | 2014-04-28 | 171 | 6.75d | 0d |  | Владимир Панов | 320h |
| 173 | 1.4.8.3 | Документы подготовлены | milestone | 0d | 2014-04-28 | 2014-04-28 | 172 | 6.75d |  |  |  |  |
| 174 | 1.4.8.4 | Разработка "Software Architecture Document" для модулей первой очереди |  | 20d | 2014-01-06 | 2014-02-03 |  | 66.75d | 0d |  | Технический писатель | 160h |
| 175 | 1.4.8.5 | Документы подготовлены | milestone | 0d | 2014-02-03 | 2014-02-03 | 174 | 66.75d |  |  |  |  |
| 176 | 1.5 | **Проверка работоспособности решения - Организация демонстрации** |  | 25d? | 2014-01-27 | 2014-03-03 | 155SS | 46.75d |  |  |  | 448h |
| 177 | 1.5.1 | Подготовка стенда |  | 3d | 2014-01-27 | 2014-01-30 | 178SF | 68.75d |  |  | Влад Симоненко; Аналитик | 48h |
| 178 | 1.5.2 | Подготовка прототипа |  | 20d? | 2014-01-27 | 2014-02-24 |  | 46.75d | 0d |  | Влад Симоненко; Аналитик | 320h |
| 179 | 1.5.3 | Проведение демонстраций |  | 3d | 2014-02-24 | 2014-02-27 | 178 | 46.75d | 0d |  | Влад Симоненко; Аналитик | 48h |
| 180 | 1.5.4 | Анализ результатов - выводы |  | 2d | 2014-02-27 | 2014-03-03 | 179 | 46.75d |  |  | Влад Симоненко; Аналитик | 32h |
